# 小Q智联APP V2.0

Schedule from a web Gantt chart, 2024-07-12 to 2024-09-30.
Saturdays are off

## Schedule

| ID | WBS | Task | Duration | Start | Finish | Predecessors | inPeople | Status |
| --- | --- | --- | --- | --- | --- | --- | --- | --- |
| 2 | 1 | **设计与开发** | 25d | 2024-07-12 | 2024-08-09 |  |  |  |
| 3 | 1.1 | UI、表结构设计与后台框架整理 | 3d | 2024-07-12 | 2024-07-15 |  |  |  |
| 4 | 2 | **学校场景** | 22d | 2024-07-17 | 2024-08-11 |  |  |  |
| 5 | 2.1 | 员工管理 | 3d | 2024-07-17 | 2024-07-19 | 3 | 邓振祥、陈泽强 | waiting |
| 6 | 2.2 | 学生管理 | 3d | 2024-07-22 | 2024-07-24 | 5 | 邓振祥、陈泽强 | waiting |
| 7 | 2.3 | 设备管理 | 1d | 2024-07-25 | 2024-07-25 | 6 | 邓振祥、陈泽强 | waiting |
| 8 | 2.4 | 通行时间 | 2d | 2024-07-26 | 2024-07-28 | 7 | 邓振祥、陈泽强 | waiting |
| 9 | 2.5 | 通行规则 | 3d | 2024-07-30 | 2024-08-01 | 8 | 邓振祥、陈泽强 | waiting |
| 10 | 2.6 | 首页处理 | 2d | 2024-08-02 | 2024-08-04 | 9 | 邓振祥、陈泽强 | waiting |
| 11 | 2.7 | 支付相关 | 3d | 2024-08-06 | 2024-08-08 | 10 | 邓振祥、陈泽强 | waiting |
| 12 | 2.8 | 联调与测试 | 5d | 2024-08-09 | 2024-08-14 | 11 | 邓振祥、陈泽强、李南 | waiting |
| 13 | 3 | **社区场景** | 18d | 2024-08-16 | 2024-09-05 |  |  |  |
| 14 | 3.1 | 房屋管理 | 3d | 2024-08-16 | 2024-08-19 | 12 | 邓振祥、陈泽强 | waiting |
| 15 | 3.2 | 员工管理 | 2d | 2024-08-21 | 2024-08-22 | 14 | 邓振祥、陈泽强 | waiting |
| 16 | 3.3 | 住户管理 | 2d | 2024-08-23 | 2024-08-25 | 15 | 邓振祥、陈泽强 | waiting |
| 17 | 3.4 | 设备管理 | 1d | 2024-08-27 | 2024-08-27 | 16 | 邓振祥、陈泽强 | waiting |
| 18 | 3.5 | 通行时间 | 2d | 2024-08-28 | 2024-08-29 | 17 | 邓振祥、陈泽强 | waiting |
| 19 | 3.6 | 通行规则 | 2d | 2024-08-30 | 2024-09-01 | 18 | 邓振祥、陈泽强 | waiting |
| 20 | 3.7 | 首页处理 | 1d | 2024-09-03 | 2024-09-03 | 19 | 邓振祥、陈泽强 | waiting |
| 21 | 3.8 | 联调与测试 | 5d | 2024-09-04 | 2024-09-09 | 20 | 邓振祥、陈泽强、李南 | waiting |
| 22 | 4 | **通用场景** | 10d | 2024-09-11 | 2024-09-22 |  |  |  |
| 23 | 4.1 | 人员管理 | 1d | 2024-09-11 | 2024-09-11 | 21 | 邓振祥、陈泽强 | waiting |
| 24 | 4.2 | 设备管理 | 1d | 2024-09-12 | 2024-09-12 | 23 | 邓振祥、陈泽强 | waiting |
| 25 | 4.3 | 通行时间 | 1d | 2024-09-13 | 2024-09-13 | 24 | 邓振祥、陈泽强 | waiting |
| 26 | 4.4 | 通行规则 | 1d | 2024-09-16 | 2024-09-16 | 25 | 邓振祥、陈泽强 | waiting |
| 27 | 4.5 | 首页处理 | 1d | 2024-09-17 | 2024-09-17 | 26 | 邓振祥、陈泽强 | waiting |
| 28 | 4.6 | 联调与测试 | 5d | 2024-09-18 | 2024-09-23 | 27 | 邓振祥、陈泽强、李南 | waiting |
| 29 | 5 | 整体测试与BUG修复 | 3d | 2024-09-25 | 2024-09-27 | 28 | 邓振祥、陈泽强、李南 | waiting |
| 30 | 6 | 生产环境发布 | 1d | 2024-09-30 | 2024-09-30 | 29 | 邓振祥、陈泽强 | waiting |
